# Tareas

Schedule from MS Project, 2017-03-24 to 2017-04-28.

## Calendars

- Estándar: Mon-Fri 09:00-13:00, 15:00-19:00; Sat-Sun off.

## Schedule

| ID | WBS | Task | Type | Duration | Start | Finish | Predecessors | Total slack | Free slack |
| --- | --- | --- | --- | --- | --- | --- | --- | --- | --- |
| 1 | 1 | **TOTAL PROYECTO** |  | 26d | 2017-03-24 | 2017-04-28 |  | 0d |  |
| 2 | 1.1 | **FASE 1: PREPARACION PARA LA FORMULACION** |  | 26d | 2017-03-24 | 2017-04-28 |  | 0d |  |
| 3 | 1.1.1 | INICIO | milestone | 0d | 2017-03-24 | 2017-03-24 |  | 0d |  |
| 4 | 1.1.2 | TERMINOS DE REFERENCIA. Objetivos. Condicionantes del Promotor |  | 10d | 2017-03-24 | 2017-04-06 | 3 | 0d |  |
| 5 | 1.1.3 | FINANCIACION |  | 7d | 2017-03-24 | 2017-04-03 | 3 | 4d | 0d |
| 6 | 1.1.4 | COMITÉ DE COORDINACION. Constitución y organización |  | 5d | 2017-03-24 | 2017-03-30 | 3 | 21d |  |
| 7 | 1.1.5 | EQUIPO DE FORMULACION. Recursos humanos y técnicos |  | 15d | 2017-04-04 | 2017-04-24 | 5 | 4d |  |
| 8 | 1.1.6 | METODOLOGIA Y PLAN DE TRABAJO |  | 10d | 2017-04-07 | 2017-04-20 | 4 | 0d |  |
| 9 | 1.1.7 | DOC. Nº1: Fin P.F. |  | 5d | 2017-04-21 | 2017-04-27 | 8 | 0d |  |
| 10 | 1.1.8 | Entrega al PROMOTOR. Doc. nº1 | milestone | 0d | 2017-04-27 | 2017-04-27 | 9 | 0d |  |
| 11 | 1.1.9 | SEMINARIO DE LANZAMIENTO DEL PROYECTO |  | 1d | 2017-04-28 | 2017-04-28 | 10 | 0d |  |
